# Pw204 CargoCare - P2026011 + P2026012 integrated Gantt

Schedule from GanttProject, 2026-05-27 to 2026-11-30.
CargoCare project group
This planning contains one single detailed GANTT chart for both CargoCare projects: / - FA-COR-FRE-02-CACARE_P2026011: Purchase two shunting locomotives / - FA-COR-ISC-02-CACARE_P2026012: Build branch line for Juberri Ale / The plan includes phases, milestones, detailed tasks, dependencies, visible human resource assignments and notes for slack/float, holidays and critical constraints. / Corrected version: natural-day waits are modelled as fixed milestones/notes, the FA holiday period is kept only in the project calendar, preparation precedes kick-off, missing dependencies and resource overloads have been corrected.

## Calendars

- Project calendar: Mon-Fri working; Sat-Sun off. Exceptions (off unless hours are given): 2026-08-03 to 2026-08-21.

## Resources

| Resource | Group |
| --- | --- |
| RHMNG1 | RHMNG - Project management |
| RHMNG2 | RHMNG - Project management |
| RHFIN1 | RHFIN - Financial support |
| RHPUR1 | RHPUR - Purchase dept. |
| RHPUR2 | RHPUR - Purchase dept. |
| RHPUR3 | RHPUR - Purchase dept. |
| RHCON1 | RHCON - Construction |
| RHCON2 | RHCON - Construction |
| RHCON3 | RHCON - Construction |
| RHCON4 | RHCON - Construction |
| RHCON5 | RHCON - Construction |
| RHCON6 | RHCON - Construction |
| RHTRA1 | RHTRA - Track laying |
| RHTRA2 | RHTRA - Track laying |
| RHTRA3 | RHTRA - Track laying |
| RHTRA4 | RHTRA - Track laying |
| RHTRA5 | RHTRA - Track laying |
| RHTRA6 | RHTRA - Track laying |
| RHITG1 | RHITG - IS/IT group |
| RHDRV1 | RHDRV - Train drivers, AKA engineers |
| RHDRV2 | RHDRV - Train drivers, AKA engineers |
| RHTRC1 | RHTRC - Traffic control |
| RHTRU1 | RHTRU - Truck drivers |
| RHTRU2 | RHTRU - Truck drivers |
| RHCOM1 | RHCOM - Commercial dept. |
| RHRRH1 | RHRRH - Human resources dept. |
| RHQUA1 | RHQUA - Quality control |
| RHQUA2 | RHQUA - Quality control |
| RHQUA3 | RHQUA - Quality control |

## Schedule

| ID | WBS | Task | Type | Duration | Start | Finish | Predecessors | Resources |
| --- | --- | --- | --- | --- | --- | --- | --- | --- |
| 1 | 1 | **CACARE - CargoCare integrated planning** |  | 1d | 2026-05-27 | 2026-05-27 |  |  |
| 2 | 1.1 | **P2026011 - Purchase two shunting locomotives** |  | 1d | 2026-05-27 | 2026-05-27 |  |  |
| 3 | 1.1.1 | M-PSL-KO - P2026011 kick-off meeting | milestone | 0d | 2026-06-01 | 2026-06-01 | 8 | RHMNG1 |
| 4 | 1.1.2 | **PSLPRE - Preparation** |  | 1d | 2026-05-27 | 2026-05-27 |  |  |
| 5 | 1.1.2.1 | PSLPRE.1 - Final planning version |  | 1d | 2026-05-27 | 2026-05-27 | 6 | RHMNG1 |
| 6 | 1.1.2.2 | PSLPRE.2 - Final SWOT revision |  | 1d | 2026-05-28 | 2026-05-28 | 7 | RHMNG1 |
| 7 | 1.1.2.3 | PSLPRE.3 - Kick-off presentation preparation |  | 1d | 2026-05-29 | 2026-05-29 | 3 | RHMNG1 |
| 8 | 1.1.2.4 | PSLPRE.4 - CargoCare synchronization |  | 1d | 2026-06-01 | 2026-06-01 | 10 | RHMNG1 |
| 9 | 1.1.3 | **PSLRFI - Request for information** |  | 1d | 2026-06-02 | 2026-06-02 |  |  |
| 10 | 1.1.3.1 | PSLRFI.1 - Find possible providers |  | 1d | 2026-06-02 | 2026-06-02 | 11 | RHMNG1 |
| 11 | 1.1.3.2 | PSLRFI.2 - Create formal inquiry document |  | 1d | 2026-06-03 | 2026-06-03 | 12 | RHMNG1; RHPUR1 |
| 12 | 1.1.3.3 | PSLRFI.3 - Send inquiry to providers |  | 1d | 2026-06-04 | 2026-06-04 |  | RHPUR1 [50%] |
| 13 | 1.1.3.4 | M-PSL-RFI-DEADLINE - RFI answers received (10 natural days) | milestone | 0d | 2026-06-14 | 2026-06-14 | 14 |  |
| 14 | 1.1.3.5 | PSLRFI.4 - Analyze reactions and select candidate list |  | 1d | 2026-06-15 | 2026-06-15 | 16, 17, 18 | RHMNG1 [50%]; RHPUR1 [50%] |
| 15 | 1.1.4 | **PSLRFP - Request for proposal** |  | 1d | 2026-06-16 | 2026-06-16 |  |  |
| 16 | 1.1.4.1 | PSLRFP.1 - Technical chapter |  | 3d | 2026-06-16 | 2026-06-18 | 19 | RHMNG1 |
| 17 | 1.1.4.2 | PSLRFP.2 - Legal chapter |  | 1d | 2026-06-16 | 2026-06-16 | 19 | RHPUR1 |
| 18 | 1.1.4.3 | PSLRFP.3 - Financial appendix |  | 2d | 2026-06-16 | 2026-06-17 | 19 | RHFIN1 |
| 19 | 1.1.4.4 | PSLRFP.4 - Board authorization request preparation |  | 1d | 2026-06-19 | 2026-06-19 | 20 | RHMNG1; RHPUR1 |
| 20 | 1.1.4.5 | PSLRFP.W - Wait for Board meeting |  | 7d | 2026-06-22 | 2026-06-30 | 21 |  |
| 21 | 1.1.4.6 | M-PSL-RFP-BOARD - RFP authorization granted by Board | milestone | 0d | 2026-07-01 | 2026-07-01 | 22 |  |
| 22 | 1.1.4.7 | PSLRFP.5 - Candidate provider selection |  | 2d | 2026-07-01 | 2026-07-02 | 23 | RHMNG1; RHPUR1 |
| 23 | 1.1.4.8 | PSLRFP.6 - Send RFPs to providers |  | 1d | 2026-07-03 | 2026-07-03 |  | RHPUR1 |
| 24 | 1.1.4.9 | M-PSL-RFP-DEADLINE - Proposals received (15 natural days) | milestone | 0d | 2026-07-18 | 2026-07-18 | 26 |  |

Notes:
- 1: One single detailed Gantt chart for both projects.
- 2: FA-COR-FRE-02-CACARE_P2026011
- 3: Mandatory kick-off meeting on 01/06/2026. The final plan and SWOT revision are completed before the meeting.
- 4: Preparation work is scheduled before the formal kick-off so the kick-off meeting can present the planning and SWOT results.
- 10: At least 6 providers in Europe.
- 13: Fixed calendar milestone: 10 natural days after sending the RFI on 04/06/2026. Do not model this as 10 working days in GanttProject.
- 14: 0.5 day of analysis/final selection. Scheduled on the first working day after the 10-natural-day RFI deadline.
- 19: Purchase amount > 200,000 EUR, Board authorization required.
- 20: Board meets on first working day of the month.
- 21: RFP authorization milestone.
- 24: Fixed calendar milestone: 15 natural days after RFP sending on 03/07/2026. Official opening is planned the next working day, 20/07/2026.

| ID | WBS | Task | Type | Duration | Start | Finish | Predecessors | Resources |
| --- | --- | --- | --- | --- | --- | --- | --- | --- |
| 25 | 1.1.5 | **PSLPAN - Proposal analysis** |  | 1d | 2026-07-20 | 2026-07-20 |  |  |
| 26 | 1.1.5.1 | PSLPAN.1 - Organize official opening event |  | 2d | 2026-07-20 | 2026-07-21 | 27 | RHPUR3; RHPUR2 |
| 27 | 1.1.5.2 | PSLPAN.2 - Analyze proposals |  | 5d | 2026-07-21 | 2026-07-27 | 29 | RHMNG1; RHFIN1; RHPUR1 |
| 28 | 1.1.6 | **PSLSEL - Provider selection** |  | 1d | 2026-07-27 | 2026-07-27 |  |  |
| 29 | 1.1.6.1 | PSLSEL.1 - Select final provider |  | 1d | 2026-07-28 | 2026-07-28 | 30 | RHMNG1; RHPUR1; RHFIN1 |
| 30 | 1.1.6.2 | PSLSEL.2 - Create purchase proposal |  | 1d | 2026-07-29 | 2026-07-29 | 31 | RHMNG1; RHPUR1 |
| 31 | 1.1.6.3 | PSLSEL.W - Wait for advanced August Board meeting |  | 1d | 2026-07-29 | 2026-07-29 | 32 |  |
| 32 | 1.1.6.4 | M-PSL-SEL-BOARD - Purchase proposal authorized by Board | milestone | 0d | 2026-07-30 | 2026-07-30 | 34, 35, 36 |  |
| 33 | 1.1.7 | **PSLORD - Purchase order** |  | 1d | 2026-07-31 | 2026-07-31 |  |  |
| 34 | 1.1.7.1 | PSLORD.1 - Communicate award decision to all candidates |  | 1d | 2026-07-31 | 2026-07-31 |  | RHPUR1 |
| 35 | 1.1.7.2 | PSLORD.2 - Send purchase order to selected provider |  | 2d | 2026-07-31 | 2026-08-24 | 37 | RHPUR2 |
| 36 | 1.1.7.3 | PSLORD.3 - Inform rejected candidates |  | 1d | 2026-07-31 | 2026-07-31 | 37 | RHPUR3 |
| 37 | 1.1.7.4 | M-PSL-ORDER-CONFIRMED - Provider confirms PO and delivery date | milestone | 0d | 2026-08-25 | 2026-08-25 | 39, 43 |  |
| 38 | 1.1.8 | **PSLOFU - Order follow-up** |  | 1d | 2026-08-26 | 2026-08-26 |  |  |
| 39 | 1.1.8.1 | PSLOFU.1 - Follow-up meeting 1 |  | 2d | 2026-08-26 | 2026-08-27 | 40 | RHMNG1 |
| 40 | 1.1.8.2 | PSLOFU.2 - Follow-up meeting 2 |  | 2d | 2026-09-09 | 2026-09-10 | 41 | RHMNG1 |
| 41 | 1.1.8.3 | PSLOFU.3 - Follow-up meeting 3 |  | 2d | 2026-09-23 | 2026-09-24 | 42 | RHMNG1 |
| 42 | 1.1.8.4 | PSLOFU.4 - Follow-up meeting 4 |  | 2d | 2026-10-07 | 2026-10-08 |  | RHMNG1 |
| 43 | 1.1.8.5 | M-PSL-LOCOMOTIVES-READY - Provider manufacturing completed (55 natural days) | milestone | 0d | 2026-10-19 | 2026-10-19 | 44 |  |
| 44 | 1.1.8.6 | PSLOFU.T - Rail transport to Andorra la Vella |  | 5d | 2026-10-19 | 2026-10-23 | 46 |  |
| 45 | 1.1.9 | **PSLDEL - Delivery** |  | 1d | 2026-10-26 | 2026-10-26 |  |  |
| 46 | 1.1.9.1 | PSLDEL.1 - Locomotive 1 acceptance |  | 2d | 2026-10-26 | 2026-10-27 | 47 | RHDRV1; RHQUA1; RHMNG1 |
| 47 | 1.1.9.2 | PSLDEL.2 - Locomotive 2 acceptance |  | 2d | 2026-10-28 | 2026-10-29 | 48 | RHDRV2; RHQUA1; RHMNG1 |
| 48 | 1.1.9.3 | PSLDEL.3 - Issue fixing and verification |  | 4d | 2026-10-30 | 2026-11-04 | 49 | RHQUA1; RHDRV1; RHDRV2 |
| 49 | 1.1.9.4 | M-PSL-DELIVERED - Locomotives accepted | milestone | 0d | 2026-11-04 | 2026-11-04 | 51 |  |

Notes:
- 31: August Board meeting advanced to 30/07/2026 due to FA summer holidays.
- 32: Critical Board authorization milestone.
- 34: Decision communicated after Board authorization. This covers the formal award communication step.
- 35: Purchase order is sent within five working days after the award communication. The second working day falls after the FA summer holiday because internal FA work is suspended in the calendar.
- 36: Rejected candidates are informed in parallel with the award/order communication.
- 37: Provider confirms the purchase order and the planned delivery date before the external manufacturing period is considered active.
- 41: Third provider follow-up meeting; part of the 8 effort-days planned for order follow-up.
- 42: Fourth provider follow-up meeting; total planned follow-up effort = 4 meetings x 2 days = 8 days.
- 43: Fixed external calendar milestone: 55 natural days from 25/08/2026. The provider is not interrupted by FA holidays; do not model this as 55 working days.
- 44: Five-day rail transport after manufacturing. This interval falls on working days in the FA calendar.
- 49: Required for P2026012 test drives.

| ID | WBS | Task | Type | Duration | Start | Finish | Predecessors | Resources |
| --- | --- | --- | --- | --- | --- | --- | --- | --- |
| 50 | 1.1.10 | **PSLTRN - Training** |  | 1d | 2026-11-05 | 2026-11-05 |  |  |
| 51 | 1.1.10.1 | PSLTRN.1 - Organize driver training |  | 5d | 2026-11-05 | 2026-11-11 | 52 | RHRRH1 |
| 52 | 1.1.10.2 | M-PSL-TRAINED - Drivers ready for test drives | milestone | 0d | 2026-11-11 | 2026-11-11 | 54, 126 |  |
| 53 | 1.1.11 | **PSLCLO - Closure** |  | 1d | 2026-11-12 | 2026-11-12 |  |  |
| 54 | 1.1.11.1 | PSLCLO.1 - Final KPI calculation and interpretation |  | 1d | 2026-11-12 | 2026-11-12 | 55 | RHMNG1 |
| 55 | 1.1.11.2 | PSLCLO.2 - End report creation |  | 2d | 2026-11-13 | 2026-11-16 | 56 | RHMNG1 |
| 56 | 1.1.11.3 | PSLCLO.3 - Debriefing with CargoCare group |  | 1d | 2026-11-17 | 2026-11-17 | 57 | RHMNG1; RHMNG2 |
| 57 | 1.1.11.4 | M-PSL-CLOSED - P2026011 closed | milestone | 0d | 2026-11-17 | 2026-11-17 | 139 |  |
| 58 | 1.2 | **P2026012 - Build branch line for Juberri Ale** |  | 1d | 2026-06-04 | 2026-06-04 |  |  |
| 59 | 1.2.1 | M-BJA-KO - P2026012 kick-off meeting | milestone | 0d | 2026-06-09 | 2026-06-09 | 64 | RHMNG2 |
| 60 | 1.2.2 | **BJAPRE - Preparation** |  | 1d | 2026-06-04 | 2026-06-04 |  |  |
| 61 | 1.2.2.1 | BJAPRE.1 - Final planning version |  | 1d | 2026-06-04 | 2026-06-04 | 62 | RHMNG2 |
| 62 | 1.2.2.2 | BJAPRE.2 - KPI definition |  | 1d | 2026-06-05 | 2026-06-05 | 63 | RHMNG2 |
| 63 | 1.2.2.3 | BJAPRE.3 - Final SWOT revision |  | 1d | 2026-06-08 | 2026-06-08 | 59 | RHMNG2 |
| 64 | 1.2.2.4 | BJAPRE.4 - CargoCare synchronization |  | 1d | 2026-06-09 | 2026-06-09 |  | RHMNG2 |
| 65 | 1.2.3 | **BJASIP - Site preparation** |  | 1d | 2026-07-01 | 2026-07-01 |  |  |
| 66 | 1.2.3.1 | BJASIP.1 - Install railway traffic warning signs |  | 2d | 2026-07-01 | 2026-07-02 | 67 | RHCON1; RHCON2; RHTRC1 |
| 67 | 1.2.3.2 | BJASIP.W - 24h adaptation period |  | 1d | 2026-07-03 | 2026-07-03 | 68, 69 |  |
| 68 | 1.2.3.3 | BJASIP.2 - Transport gravel and sand to site |  | 2d | 2026-07-06 | 2026-07-07 | 70, 71 | RHTRU1; RHTRU2 |
| 69 | 1.2.3.4 | BJASIP.3 - Remove vegetation |  | 3d | 2026-07-06 | 2026-07-08 | 70 | RHCON1; RHCON2; RHCON3 |
| 70 | 1.2.3.5 | BJASIP.4 - Land leveling and conditioning |  | 2d | 2026-07-09 | 2026-07-10 | 72 | RHCON1; RHCON2; RHCON3 |
| 71 | 1.2.3.6 | BJASIP.5 - Build temporary gravel access road |  | 3d | 2026-07-08 | 2026-07-10 | 72 | RHCON4; RHCON5; RHCON6 |
| 72 | 1.2.3.7 | M-BJA-SITE-READY - Site preparation completed | milestone | 0d | 2026-07-10 | 2026-07-10 | 74, 75 |  |
| 73 | 1.2.4 | **BJAPLB - Platform building** |  | 1d | 2026-07-13 | 2026-07-13 |  |  |
| 74 | 1.2.4.1 | BJAPLB.1E - Transport materials for east platform |  | 1d | 2026-07-13 | 2026-07-13 | 76, 83 | RHTRU1; RHCON1 |
| 75 | 1.2.4.2 | BJAPLB.2E - Order concrete for east platform |  | 1d | 2026-07-13 | 2026-07-13 | 77, 84 | RHCON2 |
| 76 | 1.2.4.3 | BJAPLB.3E - East platform formwork and steel mats |  | 3d | 2026-07-14 | 2026-07-16 | 78 | RHCON1; RHCON2; RHCON3 |
| 77 | 1.2.4.4 | BJAPLB.4E - East platform concrete delivery milestone | milestone | 0d | 2026-07-17 | 2026-07-17 | 78 |  |
| 78 | 1.2.4.5 | BJAPLB.5E - East platform concrete pouring |  | 1d | 2026-07-17 | 2026-07-17 | 79 | RHCON1; RHCON2; RHCON3 |
| 79 | 1.2.4.6 | M-BJAPLB-E-CURED - East platform concrete cured (4 natural days) | milestone | 0d | 2026-07-21 | 2026-07-21 | 80, 81 |  |
| 80 | 1.2.4.7 | BJAPLB.7E - East platform formwork removal |  | 2d | 2026-07-21 | 2026-07-22 | 82 | RHCON1; RHCON2 |
| 81 | 1.2.4.8 | BJAPLB.8E - East platform lamp posts installation |  | 1d | 2026-07-23 | 2026-07-23 | 82 | RHCON3; RHITG1 |
| 82 | 1.2.4.9 | BJAPLB.9E - East platform completion |  | 2d | 2026-07-24 | 2026-07-27 | 92 | RHCON1; RHCON2 |
| 83 | 1.2.4.10 | BJAPLB.1W - Transport materials for west platform |  | 1d | 2026-07-14 | 2026-07-14 | 85 | RHTRU1; RHCON4 |
| 84 | 1.2.4.11 | BJAPLB.2W - Order concrete for west platform |  | 1d | 2026-07-14 | 2026-07-14 | 86 | RHCON5 |
| 85 | 1.2.4.12 | BJAPLB.3W - West platform formwork and steel mats |  | 3d | 2026-07-15 | 2026-07-17 | 87 | RHCON4; RHCON5; RHCON6 |
| 86 | 1.2.4.13 | BJAPLB.4W - West platform concrete delivery milestone | milestone | 0d | 2026-07-22 | 2026-07-22 | 87 |  |
| 87 | 1.2.4.14 | BJAPLB.5W - West platform concrete pouring |  | 1d | 2026-07-22 | 2026-07-22 | 88 | RHCON4; RHCON5; RHCON6 |
| 88 | 1.2.4.15 | M-BJAPLB-W-CURED - West platform concrete cured (4 natural days) | milestone | 0d | 2026-07-27 | 2026-07-27 | 89, 90 |  |
| 89 | 1.2.4.16 | BJAPLB.7W - West platform formwork removal |  | 2d | 2026-07-27 | 2026-07-28 | 91 | RHCON4; RHCON5 |
| 90 | 1.2.4.17 | BJAPLB.8W - West platform lamp posts installation |  | 1d | 2026-07-29 | 2026-07-29 | 91 | RHCON6; RHITG1 |
| 91 | 1.2.4.18 | BJAPLB.9W - West platform completion |  | 2d | 2026-07-30 | 2026-07-31 | 92 | RHCON4; RHCON5 |
| 92 | 1.2.4.19 | M-BJA-PLATFORMS - Platforms completed | milestone | 0d | 2026-07-31 | 2026-07-31 | 94, 99 |  |

Notes:
- 51: Actual training session is outside this project.
- 52: Required for P2026012 test drives.
- 58: FA-COR-ISC-02-CACARE_P2026012
- 59: Mandatory kick-off meeting on 09/06/2026. The final plan, KPI definition and SWOT revision are completed before the meeting.
- 60: Preparation work is scheduled before the formal kick-off so the kick-off meeting can present the planning, KPI and SWOT results.
- 66: Cannot start before 01/07/2026.
- 67: Mandatory 24h adaptation period after installation of safety warning signs. No other site work starts before this period has passed.
- 75: Concrete must be ordered 3 working days before delivery.
- 77: Concrete delivery and pouring are planned on the same working day; the order was placed three working days before delivery.
- 79: Fixed technical calendar milestone: 4 natural days after pouring, not 4 FA working days.
- 84: Separate concrete order. Ordered earlier than the minimum 3 working days and delivery is planned after the required interval from the east platform delivery.
- 86: Concrete delivery for one platform only. Date respects at least two working days between the east and west concrete deliveries.
- 88: Technical curing period is 4 natural days after pouring; removal/lamp tasks start on the next FA working day.

| ID | WBS | Task | Type | Duration | Start | Finish | Predecessors | Resources |
| --- | --- | --- | --- | --- | --- | --- | --- | --- |
| 93 | 1.2.5 | **BJACOM - Communications** |  | 1d | 2026-08-24 | 2026-08-24 |  |  |
| 94 | 1.2.5.1 | BJACOM.1 - Prepare press conference |  | 1d | 2026-08-24 | 2026-08-24 | 95 | RHCOM1 |
| 95 | 1.2.5.2 | BJACOM.2 - Press conference at track laying start |  | 1d | 2026-08-25 | 2026-08-25 |  | RHCOM1; RHMNG2 |
| 96 | 1.2.5.3 | BJACOM.3 - RTVA reportage during test drive 3 |  | 1d | 2026-11-18 | 2026-11-18 | 97 | RHCOM1 |
| 97 | 1.2.5.4 | BJACOM.4 - RTVA evening broadcast coordination |  | 1d | 2026-11-19 | 2026-11-19 |  | RHCOM1 |
| 98 | 1.2.6 | **BJATRB - Track building** |  | 1d | 2026-08-24 | 2026-08-24 |  |  |
| 99 | 1.2.6.1 | BJATRB.MAT - Transport track, turnout and signal materials by rail to site |  | 1d | 2026-07-31 | 2026-07-31 | 100 | RHTRA6; RHDRV2 |
| 100 | 1.2.6.2 | BJATRB.0 - Weather forecast consultation |  | 1d | 2026-08-24 | 2026-08-24 | 101 | RHMNG2 |
| 101 | 1.2.6.3 | BJATRB.1 - Install alternate traffic using AW |  | 1d | 2026-08-24 | 2026-08-24 | 102 | RHTRC1; RHTRA1 |
| 102 | 1.2.6.4 | BJATRB.2 - Install TO151a in AE |  | 1d | 2026-08-25 | 2026-08-25 | 103 | RHTRA1; RHTRA2 |
| 103 | 1.2.6.5 | M-BJATRB-TO151A-LOCKED - TO151a locked to straight position | milestone | 0d | 2026-08-25 | 2026-08-25 | 104 |  |
| 104 | 1.2.6.6 | BJATRB.N1 - Resume normal traffic for 3 working days |  | 3d | 2026-08-26 | 2026-08-28 | 105 |  |
| 105 | 1.2.6.7 | BJATRB.3B - Weather forecast consultation before AW phase |  | 1d | 2026-08-28 | 2026-08-28 | 106 | RHMNG2 |
| 106 | 1.2.6.8 | BJATRB.4 - Install alternate traffic using AE |  | 1d | 2026-08-31 | 2026-08-31 | 107, 108, 109 | RHTRC1 |
| 107 | 1.2.6.9 | BJATRB.5 - Install TO151b in AW |  | 1d | 2026-08-31 | 2026-08-31 | 111 | RHTRA1; RHTRA2 |
| 108 | 1.2.6.10 | BJATRB.6 - Install TO142a in AW |  | 1d | 2026-08-31 | 2026-08-31 | 110 | RHTRA3; RHTRA4 |
| 109 | 1.2.6.11 | BJATRB.7 - Install TO141 in AW |  | 1d | 2026-08-31 | 2026-08-31 | 110 | RHTRA5; RHTRA6 |
| 110 | 1.2.6.12 | BJATRB.8 - Lock TO142a and TO141 |  | 1d | 2026-09-01 | 2026-09-01 | 111 | RHTRA1 |
| 111 | 1.2.6.13 | BJATRB.9 - Take TO151a+b into service |  | 1d | 2026-09-01 | 2026-09-01 | 112 | RHTRA2; RHTRC1 |
| 112 | 1.2.6.14 | BJATRB.10 - Resume normal traffic | milestone | 0d | 2026-09-01 | 2026-09-01 | 113, 114 |  |
| 113 | 1.2.6.15 | BJATRB.11 - Lay arrival track T14 including TO142b |  | 4d | 2026-09-02 | 2026-09-07 | 115 | RHTRA1; RHTRA2; RHTRA3 |
| 114 | 1.2.6.16 | BJATRB.12 - Build loading tracks T91, T92 and TO901 |  | 5d | 2026-09-02 | 2026-09-08 | 121 | RHTRA4; RHTRA5; RHTRA6 |
| 115 | 1.2.6.17 | BJATRB.13 - Install signal SN141 |  | 1d | 2026-09-09 | 2026-09-09 | 116 | RHTRA1; RHITG1; RHTRC1 |
| 116 | 1.2.6.18 | BJATRB.14 - Install signal SN142 |  | 1d | 2026-09-10 | 2026-09-10 | 117 | RHTRA1; RHITG1; RHTRC1 |
| 117 | 1.2.6.19 | BJATRB.15 - Install signal SN151 |  | 1d | 2026-09-11 | 2026-09-11 | 118 | RHTRA1; RHITG1; RHTRC1 |
| 118 | 1.2.6.20 | BJATRB.16 - Install signal SN251 |  | 1d | 2026-09-14 | 2026-09-14 | 119 | RHTRA1; RHITG1; RHTRC1 |
| 119 | 1.2.6.21 | BJATRB.17 - Install signal SN252 |  | 1d | 2026-09-15 | 2026-09-15 | 120 | RHTRA1; RHITG1; RHTRC1 |
| 120 | 1.2.6.22 | BJATRB.18 - Install signal SN253 |  | 1d | 2026-09-16 | 2026-09-16 | 121 | RHTRA1; RHITG1; RHTRC1 |
| 121 | 1.2.6.23 | BJATRB.19 - Test all track and signal elements |  | 2d | 2026-09-17 | 2026-09-18 | 122 | RHQUA1; RHQUA2; RHTRA1; RHTRC1 |
| 122 | 1.2.6.24 | M-BJA-TRACK-READY - Track and signalling ready | milestone | 0d | 2026-09-18 | 2026-09-18 | 124 |  |

Notes:
- 96: RTVA reportage is scheduled on the same day as BJATST.4 (test drive 3). Linked to the previous no-test day because the reportage must run concurrently with the test, not after it.
- 99: Materials are in stock at the shunting yard; transport by rail to the site is planned before track construction starts after the FA summer holiday.
- 100: If negative advice due to severe weather, postpone maximum 3 working days.
- 101: Alternate traffic max 48h.
- 103: Locking is treated as a milestone at the end of TO151a integration to keep alternate traffic within the 48h limit.
- 104: Mandatory normal traffic period of 3 working days before next track interruption.
- 105: Second weather consultation before the second main-line interruption phase.
- 122: Branch line technically ready, but integral testing waits for locomotives and trained drivers.

| ID | WBS | Task | Type | Duration | Start | Finish | Predecessors | Resources |
| --- | --- | --- | --- | --- | --- | --- | --- | --- |
| 123 | 1.2.7 | **BJATST - Test drive** |  | 1d | 2026-11-02 | 2026-11-02 |  |  |
| 124 | 1.2.7.1 | BJATST.1 - Prepare complete test sequence |  | 1d | 2026-11-02 | 2026-11-02 | 125, 126 | RHTRC1 |
| 125 | 1.2.7.2 | BJATST.S - Slack waiting for locomotives and trained drivers |  | 7d | 2026-11-03 | 2026-11-11 | 126 |  |
| 126 | 1.2.7.3 | BJATST.2 - Test drive 1 - Deliver four wagons with locomotive 1 |  | 1d | 2026-11-12 | 2026-11-12 | 127 | RHDRV1; RHTRC1; RHQUA1 |
| 127 | 1.2.7.4 | BJATST.W1 - One day without test activities |  | 1d | 2026-11-13 | 2026-11-13 | 128 |  |
| 128 | 1.2.7.5 | BJATST.3 - Test drive 2 - Deliver one wagon and pick up four wagons with locomotive 2 |  | 1d | 2026-11-16 | 2026-11-16 | 129 | RHDRV2; RHTRC1; RHQUA1 |
| 129 | 1.2.7.6 | BJATST.W2 - One day without test activities |  | 1d | 2026-11-17 | 2026-11-17 | 96, 130 |  |
| 130 | 1.2.7.7 | BJATST.4 - Test drive 3 - Deliver one wagon and pick up one wagon with locomotive 2 |  | 1d | 2026-11-18 | 2026-11-18 | 131 | RHDRV2; RHTRC1; RHQUA1 |
| 131 | 1.2.7.8 | BJATST.W3 - One day without test activities |  | 1d | 2026-11-19 | 2026-11-19 | 132 |  |
| 132 | 1.2.7.9 | BJATST.5 - Test drive 4 - Deliver three wagons and pick up one wagon with locomotive 1 |  | 1d | 2026-11-20 | 2026-11-20 | 133 | RHDRV1; RHTRC1; RHQUA1 |
| 133 | 1.2.7.10 | M-BJA-TESTS-OK - Test drives completed | milestone | 0d | 2026-11-20 | 2026-11-20 | 135 |  |
| 134 | 1.2.8 | **BJACLO - Closure** |  | 1d | 2026-11-23 | 2026-11-23 |  |  |
| 135 | 1.2.8.1 | BJACLO.1 - Final KPI calculation and interpretation |  | 2d | 2026-11-23 | 2026-11-24 | 136 | RHMNG2; RHQUA1 |
| 136 | 1.2.8.2 | BJACLO.2 - End report creation |  | 3d | 2026-11-25 | 2026-11-27 | 137 | RHMNG2 |
| 137 | 1.2.8.3 | BJACLO.3 - Debriefing with CargoCare group |  | 1d | 2026-11-30 | 2026-11-30 | 138 | RHMNG1; RHMNG2 |
| 138 | 1.2.8.4 | M-BJA-CLOSED - P2026012 closed | milestone | 0d | 2026-11-30 | 2026-11-30 | 139 |  |
| 139 | 1.3 | M-CACARE-END - Both projects completed | milestone | 0d | 2026-11-30 | 2026-11-30 |  |  |

Notes:
- 124: Must be prepared 10 days before first test drive.
- 125: Float/slack: branch line is ready before locomotives and trained drivers are available. This is a non-working waiting buffer.
- 127: Analysis of results / small fixes if needed.
- 129: Analysis of results / small fixes if needed.
- 130: RTVA reportage during this test drive.
- 131: Analysis of results / small fixes if needed.
- 139: Both projects completed before required CargoCare service date 01/12/2027.
